# Project PM

Schedule from MS Project, 2024-09-02 to 2025-03-03, status date 2024-12-22, costs in $, A marks actual dates.

## Calendars

- Standard: Mon-Thu 08:00-12:00, 13:00-17:00; Fri-Sat off; Sun 08:00-12:00, 13:00-17:00. Exceptions (off unless hours are given): 2024-10-01 (Start of High-season), 2025-01-07 (coptic cristmas), 2025-01-25 (police day).

## Resources

| Resource | Group | Rate | Cost per use | Notes |
| --- | --- | --- | --- | --- |
| Project manager |  | 50 |  |  |
| System Analist |  | 31.25 |  |  |
| Graphic Designer |  |  |  |  |
| Design Team |  | 40 |  |  |
| Technical Design Engineer |  | 24 |  |  |
| Database Engineer |  | 20 |  |  |
| Frontend team |  | 46 |  |  |
| Backend team |  | 57 |  |  |
| Database Adminstrator |  | 19 |  |  |
| Software Developer |  | 27 |  |  |
| Software Engineer |  | 33 |  |  |
| Technical Support team |  | 35 |  |  |
| Quality Control Engineer |  | 22 |  |  |
| Testing team |  | 46 |  |  |
| System architect |  | 30 |  |  |
| Technical consultant |  | 17 |  |  |
| Security Engineer |  | 30 |  |  |
| Marketing Team |  |  |  |  |
| Data Analyst team |  | 100 |  |  |
| ENR PR |  |  |  |  |
| ENR Database | Software elements and frameworks |  |  | (clients data-feedback and complaints-stations data and capacity-reservations data-trains data) |
| Egypt Trains mobile app | Software elements and frameworks |  |  |  |
| Scanner | Hardware |  | 0.5 |  |
| Webservers | Hardware |  | 10 |  |
| PC | Hardware |  | 0.5 |  |
| Laptops | Hardware |  | 0.5 |  |
| Source code of the ENR software | Software elements and frameworks |  |  |  |
| LibreOffice | Software elements and frameworks |  |  |  |
| microsoft teams | Software elements and frameworks |  |  |  |
| Bizagi modeler | Software elements and frameworks |  |  | For creating flowcharts, data flow diagrams, and system architecture diagrams. |
| Enterprise Architect | Software elements and frameworks |  |  | For designing system models using UML standards. |
| Figma | Software elements and frameworks |  |  | Collaborative design tool for interfaces / And Prototyping Tool for Technical design |
| MySQL Workbench | Software elements and frameworks |  |  | Ideal for designing, visualizing, and managing MySQL databases. |
| Visual Paradigm | Software elements and frameworks |  |  | Supports UML, database diagrams, and more |
| Microsoft SQL Server | Software elements and frameworks |  |  |  |
| Firebird | Software elements and frameworks |  |  | Lightweight, open-source RDBMS for embedded use (Embedded databases are specifically built to integrate with desktop apps without a separate server.) |
| HeidiSQL | Software elements and frameworks |  |  | Easy-to-use tool for managing SQL databases like MySQL and MariaDB. |
| Infrastructure Automation Tools(Terraform) | Software elements and frameworks |  |  |  |
| Database Optimizer Plugin(SolarWinds) | Software elements and frameworks |  |  |  |
| Caching Tool | Software elements and frameworks |  |  |  |
| Encryption Tool(OpenSSL) | Software elements and frameworks |  |  |  |
| Docker | Software elements and frameworks |  |  | Containerization and Orchestration |
| flutter framework | Software elements and frameworks |  |  |  |
| Test Network Infrastructure | Software elements and frameworks |  |  |  |
| Test Server | Software elements and frameworks |  |  |  |
| Hall no.1 |  |  | 5 |  |
| Hall no.2 |  |  | 5 |  |
| Hall no.3 |  |  | 5 |  |
| Brainstorming room |  |  | 5 |  |
| Jenkins | Software elements and frameworks |  |  | for creating backups of the database, source code, and configurations |
| Jira | Software elements and frameworks |  |  | for creating backups of the database, source code, and configurations |
| Contract for healthcare services | External contracts |  |  |  |
| Contract with NCTH | External contracts |  |  |  |
| Meeting Room |  |  | 5 |  |
| Business Analysts |  | 40 |  |  |
| SEO with Google and Microsoft Edge | Expenses |  |  |  |
| Google Analytics |  |  |  |  |
| Meltwater |  |  |  | ·See how people are talking about your brand / ·Find out where those conversations are happening / ·Estimate content marketing ROI / ·Track your reputation / ·Learn how people feel about your brand. |
| Social Media Influencers |  |  |  |  |
| Clip folders |  |  | 5 |  |
| Printers |  |  | 3 |  |
| Travel Expenses | Expenses |  |  |  |

## Schedule

| ID | WBS | Task | Duration | Start | Finish | Predecessors | Complete | Remaining | Baseline start | Baseline finish | Baseline duration | Total slack | Resources | Work | Actual work | Cost | Baseline cost | Actual cost |
| --- | --- | --- | --- | --- | --- | --- | --- | --- | --- | --- | --- | --- | --- | --- | --- | --- | --- | --- |
| 1 | 1 | **Railway Network Services** | 129d | 2024-09-02 A | 2025-03-03 |  | 56% | 56.19d | 2024-09-02 | 2025-02-16 | 118d | 0d |  | 2148h | 1196h | 84,763 | 81,950 | 47,172 |
| 2 | 1.1 | **Pre-Building** | 7d | 2024-09-02 A | 2024-09-10 |  | 99% | 0d | 2024-09-02 | 2024-09-10 | 7d | 0d |  | 88h | 88h | 7,200 | 7,200 | 7,200 |
| 3 | 1.1.1 | **Market Research** | 4d | 2024-09-02 A | 2024-09-05 |  | 99% | 0d | 2024-09-02 | 2024-09-05 | 4d | 3d | ENR Database | 32h | 32h | 1,600 | 1,600 | 1,600 |
| 4 | 1.1.1.1 | Identify the expected age of the target audience | 3d | 2024-09-02 A | 2024-09-04 A |  | 100% |  | 2024-09-02 | 2024-09-04 | 3d |  | Marketing Team [0.1%] |  |  |  |  |  |
| 5 | 1.1.1.2 | Determine the current problems of the old ENR system | 4d | 2024-09-02 A | 2024-09-05 A |  | 100% |  | 2024-09-02 | 2024-09-05 | 4d |  | Project manager | 32h | 32h | 1,600 | 1,600 | 1,600 |
| 6 | 1.1.1.3 | Determine competitors and competitors advantages | 3d | 2024-09-02 A | 2024-09-04 |  | 99% | 0d | 2024-09-02 | 2024-09-04 | 3d | 4d | Marketing Team [0.1%]; Egypt Trains mobile app |  |  |  |  |  |
| 7 | 1.1.2 | **Data Integration** | 7d | 2024-09-02 A | 2024-09-10 A |  | 100% |  | 2024-09-02 | 2024-09-10 | 7d |  | Data Analyst team | 56h | 56h | 5,600 | 5,600 | 5,600 |
| 8 | 1.1.2.1 | Import Database from ENR system | 7d | 2024-09-02 A | 2024-09-10 A |  | 100% |  | 2024-09-02 | 2024-09-10 | 7d |  |  |  |  |  |  |  |
| 9 | 1.1.2.2 | Identify best locations or stations to initially provide the services | 4d | 2024-09-02 A | 2024-09-05 A |  | 100% |  | 2024-09-02 | 2024-09-05 | 4d |  | ENR Database |  |  |  |  |  |
| 10 | 1.1.2.3 | Collect trains information and schedules | 3d | 2024-09-02 A | 2024-09-04 A |  | 100% |  | 2024-09-02 | 2024-09-04 | 3d |  |  |  |  |  |  |  |
| 11 | 1.1.2.4 | Identify High-season, and low-season | 2d | 2024-09-02 A | 2024-09-03 A |  | 100% |  | 2024-09-02 | 2024-09-03 | 2d |  | ENR Database |  |  |  |  |  |
| 12 | 1.2 | **Tech** | 110d | 2024-09-11 A | 2025-02-13 | 2 | 71% | 32.06d | 2024-09-11 | 2025-02-13 | 110d | 12d |  | 1836h | 1108h | 68,590 | 74,750 | 39,972 |
| 13 | 1.2.1 | **Software** | 110d | 2024-09-11 A | 2025-02-13 |  | 71% | 32.06d | 2024-09-11 | 2025-02-13 | 110d | 12d |  | 1836h | 1108h | 68,590 | 74,750 | 39,972 |
| 14 | 1.2.1.1 | **Requirements Specification** | 7d | 2024-09-11 A | 2024-09-19 A |  | 100% |  | 2024-09-11 | 2024-09-19 | 7d |  | Project manager | 56h | 56h | 2,805 | 2,805 | 2,805 |
| 15 | 1.2.1.1.1 | Write each use case scenario | 7d | 2024-09-11 A | 2024-09-19 A |  | 100% |  | 2024-09-11 | 2024-09-19 | 7d |  | LibreOffice |  |  |  |  |  |
| 16 | 1.2.1.1.2 | Teams Requirements Meeting | 5d | 2024-09-11 A | 2024-09-17 A |  | 100% |  | 2024-09-11 | 2024-09-17 | 5d |  | Meeting Room |  |  | 5 | 5 | 5 |
| 17 | 1.2.1.2 | System Analysis | 5d | 2024-09-22 A | 2024-09-26 A | 14 | 100% |  | 2024-09-22 | 2024-09-26 | 5d |  | System Analist; Bizagi modeler; Laptops; microsoft teams; Enterprise Architect; Business Analysts | 40h | 40h | 1,250.5 | 1,250.5 | 1,250.5 |
| 18 | 1.2.1.3 | **Design** | 20d | 2024-09-29 A | 2024-10-27 A | 17 | 100% |  | 2024-09-29 | 2024-10-27 | 20d |  |  | 300h | 300h | 9,700.5 | 9,700.5 | 9,700.5 |
| 19 | 1.2.1.3.1 | Logo Design | 1w | 2024-09-29 A | 2024-10-06 A |  | 100% |  | 2024-09-29 | 2024-10-06 | 1w |  | Graphic Designer [0.1%] |  |  |  |  |  |
| 20 | 1.2.1.3.2 | **UI/UX design** | 20d | 2024-09-29 A | 2024-10-27 A |  | 100% |  | 2024-09-29 | 2024-10-27 | 20d |  | Design Team; Figma; PC | 160h | 160h | 6,400.5 | 6,400.5 | 6,400.5 |
| 21 | 1.2.1.3.2.1 | Wireframing | 14d | 2024-09-29 A | 2024-10-17 A |  | 100% |  | 2024-09-29 | 2024-10-17 | 14d |  |  |  |  |  |  |  |
| 22 | 1.2.1.3.2.2 | UI/UX Design | 4d | 2024-09-29 A | 2024-10-03 A |  | 100% |  | 2024-09-29 | 2024-10-03 | 4d |  |  |  |  |  |  |  |
| 23 | 1.2.1.3.2.3 | Prototyping | 20d | 2024-09-29 A | 2024-10-27 A |  | 100% |  | 2024-09-29 | 2024-10-27 | 20d |  |  |  |  |  |  |  |
| 24 | 1.2.1.3.3 | Technical Design Creation | 1w | 2024-09-29 A | 2024-10-06 A |  | 100% |  | 2024-09-29 | 2024-10-06 | 1w |  | Technical Design Engineer; System architect; Technical consultant [50%]; Figma; Visual Paradigm | 100h | 100h | 2,500 | 2,500 | 2,500 |
| 25 | 1.2.1.3.4 | Design Database | 1w | 2024-09-29 A | 2024-10-06 A | 19SS, 20SS, 24SS | 100% |  | 2024-09-29 | 2024-10-06 | 1w |  | Database Engineer; MySQL Workbench | 40h | 40h | 800 | 800 | 800 |

Notes:
- 21: Wireframes~are a type of rough sketch of a user interface.

| ID | WBS | Task | Duration | Start | Finish | Predecessors | Complete | Remaining | Baseline start | Baseline finish | Baseline duration | Total slack | Constraint | Resources | Work | Actual work | Cost | Baseline cost | Actual cost |
| --- | --- | --- | --- | --- | --- | --- | --- | --- | --- | --- | --- | --- | --- | --- | --- | --- | --- | --- | --- |
| 26 | 1.2.1.4 | **Implementation** | 30d | 2024-10-28 A | 2024-12-08 | 18 | 94% | 1.81d | 2024-10-28 | 2024-12-08 | 30d | 0d |  | MySQL Workbench | 832h | 632h | 31,736 | 37,896 | 22,536 |
| 27 | 1.2.1.4.1 | **Frontend** | 25d | 2024-10-28 A | 2024-12-01 |  | 83% | 4.17d | 2024-10-28 | 2024-11-24 | 20d | 5d |  | flutter framework; Frontend team | 200h |  | 9,200 | 15,360 |  |
| 28 | 1.2.1.4.1.1 | Web App | 5d | 2024-10-28 A | 2024-11-03 A | 30 | 100% |  | 2024-10-28 | 2024-11-24 | 20d |  |  |  |  |  |  | 8,000 |  |
| 29 | 1.2.1.4.1.2 | Desktop App | 5d | 2024-11-25 | 2024-12-01 | 30 |  |  |  |  |  | 5d |  |  |  |  |  |  |  |
| 30 | 1.2.1.4.1.3 | Mobile App | 20d | 2024-10-28 A | 2024-11-24 A |  | 100% |  | 2024-10-28 | 2024-11-24 | 20d |  |  |  |  |  |  | 7,360 |  |
| 31 | 1.2.1.4.2 | **Backend** | 25d | 2024-10-28 A | 2024-12-01 A | 27SS | 100% |  | 2024-10-28 | 2024-12-01 | 25d |  |  |  | 552h | 552h | 20,296 | 20,296 | 20,296 |
| 32 | 1.2.1.4.2.1 | Ensures data integrity | 3d | 2024-10-28 A | 2024-10-30 A |  | 100% |  | 2024-10-28 | 2024-10-30 | 3d |  |  | Database Adminstrator; Software Developer; Software Engineer; Microsoft SQL Server | 72h | 72h | 1,896 | 1,896 | 1,896 |
| 33 | 1.2.1.4.2.2 | Building Database | 15d | 2024-10-28 A | 2024-11-17 A |  | 100% |  | 2024-10-28 | 2024-11-17 | 15d |  |  | Backend team; Firebird; HeidiSQL | 120h | 120h | 6,840 | 6,840 | 6,840 |
| 34 | 1.2.1.4.2.3 | API Development | 10d | 2024-11-18 A | 2024-12-01 A | 33 | 100% |  | 2024-11-18 | 2024-12-01 | 10d |  |  | Backend team | 80h | 80h | 4,560 | 4,560 | 4,560 |
| 35 | 1.2.1.4.2.4 | Optimizing queries | 1w | 2024-11-18 A | 2024-11-24 A | 34SS, 33 | 100% |  | 2024-11-18 | 2024-11-24 | 1w |  |  | Database Adminstrator; Database Engineer; Database Optimizer Plugin(SolarWinds) | 80h | 80h | 1,560 | 1,560 | 1,560 |
| 36 | 1.2.1.4.2.5 | Implementing caching strategies | 1w | 2024-11-25 A | 2024-12-01 A | 35 | 100% |  | 2024-11-25 | 2024-12-01 | 1w |  |  | Software Developer; Caching Tool | 40h | 40h | 1,080 | 1,080 | 1,080 |
| 37 | 1.2.1.4.2.6 | Handle user authentication | 5d | 2024-11-18 A | 2024-11-24 A | 34SS | 100% |  | 2024-11-18 | 2024-11-24 | 5d |  |  | Database Adminstrator; Security Engineer; Software Developer; Encryption Tool(OpenSSL) | 120h | 120h | 3,040 | 3,040 | 3,040 |
| 38 | 1.2.1.4.2.7 | Scalability Architecture | 1w | 2024-10-28 A | 2024-11-03 A |  | 100% |  | 2024-10-28 | 2024-11-03 | 1w |  |  | Software Engineer; Docker | 40h | 40h | 1,320 | 1,320 | 1,320 |
| 39 | 1.2.1.4.3 | VDD | 5d | 2024-12-02 A | 2024-12-08 A | 27, 31 | 100% |  | 2024-12-02 | 2024-12-08 | 5d |  |  | Technical Support team [66.7%]; Software Developer [66.7%]; Quality Control Engineer [66.7%] | 80h | 80h | 2,240 | 2,240 | 2,240 |
| 40 | 1.2.1.5 | **Testing** | 30d | 2024-12-09 A | 2025-01-20 | 26 | 33% | 20d | 2024-12-09 | 2025-01-20 | 30d | 0d |  | Testing team; Test Network Infrastructure; Test Server | 240h | 80h | 11,040 | 11,040 | 3,680 |
| 41 | 1.2.1.5.1 | Establishing test cases | 2w | 2024-12-09 A | 2024-12-22 A |  | 100% |  | 2024-12-09 | 2024-12-22 | 2w |  |  |  |  |  |  |  |  |
| 42 | 1.2.1.5.2 | Conduct tests | 2w | 2024-12-23 | 2025-01-05 | 41 |  |  | 2024-12-23 | 2025-01-13 | 3w | 0d | start no earlier than 2024-12-08 |  |  |  |  |  |  |
| 43 | 1.2.1.5.3 | Fix bugs and errors | 2w | 2025-01-06 | 2025-01-20 | 42 |  |  | 2025-01-14 | 2025-01-20 | 5d | 0d |  |  |  |  |  |  |  |
| 44 | 1.2.1.6 | **Deployment** | 8d | 2025-01-21 | 2025-01-30 | 40 |  |  | 2025-01-21 | 2025-01-30 | 8d | 0d |  |  | 128h |  | 5,338 | 5,338 |  |
| 45 | 1.2.1.6.1 | Install the software into production devices | 1w | 2025-01-21 | 2025-01-27 |  |  |  |  |  |  | 3d |  |  |  |  |  |  |  |
| 46 | 1.2.1.6.2 | Schedule training sessions with ENR employees | 7d | 2025-01-21 | 2025-01-29 |  |  |  | 2025-01-21 | 2025-01-29 | 7d | 0d |  | Project manager; Software Engineer; Hall no.1; Hall no.2 | 112h |  | 4,658 | 4,658 |  |
| 47 | 1.2.1.6.3 | Post-Implementation support | 1d | 2025-01-30 | 2025-01-30 | 46 |  |  | 2025-01-30 | 2025-01-30 | 1d | 0d |  | Technical Support team; Project manager | 16h |  | 680 | 680 |  |
| 48 | 1.2.1.7 | **Maintenance** | 10d | 2025-02-02 | 2025-02-13 | 44 |  |  | 2025-02-02 | 2025-02-13 | 10d | 12d |  | Quality Control Engineer; Software Developer; Technical Support team; Jenkins; Jira | 240h |  | 6,720 | 6,720 |  |
| 49 | 1.2.1.7.1 | Updates and security | 2w | 2025-02-02 | 2025-02-13 |  |  |  | 2025-02-02 | 2025-02-13 | 2w | 12d |  |  |  |  |  |  |  |
| 50 | 1.2.1.7.2 | Analyze the system based on VDD | 1w | 2025-02-02 | 2025-02-06 |  |  |  | 2025-02-02 | 2025-02-06 | 1w | 17d |  |  |  |  |  |  |  |
| 51 | 1.2.1.7.3 | Make reports discussing performance | 2d | 2025-02-02 | 2025-02-03 |  |  |  |  |  |  | 20d |  |  |  |  |  |  |  |
| 52 | 1.2.1.7.4 | Performance optimization | 10d | 2025-02-02 | 2025-02-13 |  |  |  | 2025-02-02 | 2025-02-13 | 10d | 12d |  |  |  |  |  |  |  |

Notes:
- 39: Version Description Document

| ID | WBS | Task | Type | Duration | Start | Finish | Predecessors | Baseline start | Baseline finish | Baseline duration | Total slack | Free slack | Constraint | Resources | Work | Cost |
| --- | --- | --- | --- | --- | --- | --- | --- | --- | --- | --- | --- | --- | --- | --- | --- | --- |
| 53 | 1.3 | **Launching** |  | 22d | 2025-01-30 | 2025-03-03 | 44 | 2025-01-30 | 2025-02-16 | 11d | 0d |  |  | Marketing Team [0.1%]; Brainstorming room | 224h | 8,973 |
| 54 | 1.3.1 | Start of marketing phase | milestone | 0d | 2025-01-30 | 2025-01-30 |  | 2025-01-30 | 2025-01-30 | 0d | 22d |  |  |  |  |  |
| 55 | 1.3.2 | Meeting to discuss the expected outcomes, target audience and the message focused on |  | 3d | 2025-02-02 | 2025-02-04 |  | 2025-02-02 | 2025-02-04 | 3d | 19d |  |  | Business Analysts | 24h | 960 |
| 56 | 1.3.3 | Study the competitors methods (why are they working,why are they failing) |  | 2w | 2025-02-02 | 2025-02-13 |  | 2025-02-02 | 2025-02-06 | 5d | 12d |  |  | Egypt Trains mobile app; Business Analysts; Figma | 80h | 3,200 |
| 57 | 1.3.4 | Set initial launching procedures |  | 6d | 2025-02-02 | 2025-02-09 |  | 2025-02-02 | 2025-02-09 | 6d | 16d |  |  |  |  |  |
| 58 | 1.3.5 | Marketing team Enablement |  | 1w | 2025-02-02 | 2025-02-06 |  | 2025-02-02 | 2025-02-06 | 1w | 17d |  |  |  |  |  |
| 59 | 1.3.6 | Start of the high-season | milestone | 0d | 2025-01-30 | 2025-01-30 |  | 2025-01-30 | 2025-01-30 | 0d | 22d | 0d | finish no earlier than 2024-09-30 |  |  |  |
| 60 | 1.3.7 | **Marketing and promotions** |  | 22d | 2025-02-02 | 2025-03-03 | 59SS | 2025-02-02 | 2025-02-16 | 11d | 0d |  |  |  | 120h | 4,808 |
| 61 | 1.3.7.1 | Acquisitions marketing channels (SEO and paid ads) |  | 2w | 2025-02-02 | 2025-02-13 |  | 2025-02-02 | 2025-02-04 | 3d | 0d |  |  | SEO with Google and Microsoft Edge [0.1%] |  |  |
| 62 | 1.3.7.2 | Conduct customer feedback gathering for insights and future improvements |  | 7d | 2025-02-02 | 2025-02-10 |  | 2025-02-02 | 2025-02-10 | 7d | 15d |  |  | Google Analytics [0.1%] |  |  |
| 63 | 1.3.7.3 | Evaluate the initial process of the campaign and make any necesserary adjustments |  | 2d | 2025-02-02 | 2025-02-03 |  | 2025-02-02 | 2025-02-03 | 2d | 20d |  |  |  |  |  |
| 64 | 1.3.7.4 | Content marketing campaign (where I use platforms like social media and influencers accounts and blogs) |  | 2w | 2025-02-02 | 2025-02-13 |  | 2025-02-02 | 2025-02-06 | 5d | 0d |  |  | Social Media Influencers [0.1%] |  |  |
| 65 | 1.3.7.5 | UGC where customers contribute to the campaign |  | 1w | 2025-02-02 | 2025-02-06 | 61SS, 64SS, 66SS | 2025-02-02 | 2025-02-05 | 4d | 0d |  |  | Meltwater [0.1%] |  |  |
| 66 | 1.3.7.6 | Evaluate the ongoing process of the campaign and make adjustments to the plan |  | 2d | 2025-02-02 | 2025-02-03 |  | 2025-02-02 | 2025-02-03 | 2d | 0d |  |  |  |  |  |
| 67 | 1.3.7.7 | Design and share user guides and tutorials to allow customer engagement over Facebook, ENR website and train and bus stations |  | 3w | 2025-02-09 | 2025-02-27 | 65 | 2025-02-06 | 2025-02-12 | 1w | 0d |  |  | Graphic Designer [0.1%]; Business Analysts; Clip folders; Printers [500%]; Travel Expenses [0.1%] | 120h | 4,808 |
| 68 | 1.3.7.8 | Prepare a comprehensive post-campaign report |  | 2d | 2025-03-02 | 2025-03-03 | 67 | 2025-02-13 | 2025-02-16 | 2d | 0d |  |  |  |  |  |

Notes:
- 57: التخطيط والتحضير / دراسة الجمهور المستهدف لتحديد احتياجاته وتوقعاته
